# 新产品

Schedule from MS Project, 2007-01-01 to 2009-12-21, status date 2007-01-20, costs in ￥, A marks actual dates.

## Calendars

- TB: Mon-Fri 08:00-12:00, 13:00-17:00; Sat-Sun off. Exceptions (off unless hours are given): 2007-01-06 08:00-12:00, 2007-01-13 08:00-12:00, 2007-01-20 08:00-12:00, 2007-01-27 08:00-12:00, 2007-02-03 08:00-12:00, 2007-02-10 08:00-12:00, 2007-02-17 08:00-12:00, 2007-02-24 08:00-12:00, 2007-03-03 08:00-12:00, 2007-03-10 08:00-12:00, 2007-03-17 08:00-12:00, 2007-03-24 08:00-12:00, 2007-03-31 08:00-12:00, 2007-04-07 08:00-12:00, 2007-04-14 08:00-12:00, 2007-04-21 08:00-12:00, 2007-04-28 08:00-12:00, 2007-05-05 08:00-12:00, 2007-05-12 08:00-12:00, 2007-05-19 08:00-12:00, 2007-05-26 08:00-12:00, 2007-06-02 08:00-12:00, 2007-06-09 08:00-12:00, 2007-06-16 08:00-12:00, 2007-06-23 08:00-12:00, 2007-06-30 08:00-12:00, 2007-07-07 08:00-12:00, 2007-07-14 08:00-12:00, 2007-07-21 08:00-12:00, 2007-07-28 08:00-12:00, 2007-08-04 08:00-12:00, 2007-08-11 08:00-12:00, 2007-08-18 08:00-12:00, 2007-08-25 08:00-12:00, 2007-09-01 08:00-12:00, 2007-09-08 08:00-12:00, 2007-09-15 08:00-12:00, 2007-09-22 08:00-12:00, 2007-09-29 08:00-12:00, 2007-10-06 08:00-12:00, 2007-10-13 08:00-12:00, 2007-10-20 08:00-12:00, 2007-10-27 08:00-12:00, 2007-11-03 08:00-12:00, 2007-11-10 08:00-12:00, 2007-11-17 08:00-12:00, 2007-11-24 08:00-12:00, 2007-12-01 08:00-12:00, 2007-12-08 08:00-12:00, 2007-12-15 08:00-12:00, 2007-12-22 08:00-12:00, 2007-12-29 08:00-12:00, 2008-01-05 08:00-12:00, 2008-01-12 08:00-12:00, 2008-01-19 08:00-12:00, 2008-01-26 08:00-12:00, 2008-02-02 08:00-12:00, 2008-02-09 08:00-12:00, 2008-02-16 08:00-12:00, 2008-02-23 08:00-12:00, 2008-03-01 08:00-12:00, 2008-03-08 08:00-12:00, 2008-03-15 08:00-12:00, 2008-03-22 08:00-12:00, 2008-03-29 08:00-12:00, 2008-04-05 08:00-12:00, 2008-04-12 08:00-12:00, 2008-04-19 08:00-12:00, 2008-04-26 08:00-12:00, 2008-05-03 08:00-12:00, 2008-05-10 08:00-12:00, 2008-05-17 08:00-12:00, 2008-05-24 08:00-12:00, 2008-05-31 08:00-12:00, 2008-06-07 08:00-12:00, 2008-06-14 08:00-12:00, 2008-06-21 08:00-12:00, 2008-06-28 08:00-12:00, 2008-07-05 08:00-12:00, 2008-07-12 08:00-12:00, 2008-07-19 08:00-12:00, 2008-07-26 08:00-12:00, 2008-08-02 08:00-12:00, 2008-08-09 08:00-12:00, 2008-08-16 08:00-12:00, 2008-08-23 08:00-12:00, 2008-08-30 08:00-12:00, 2008-09-06 08:00-12:00, 2008-09-13 08:00-12:00, 2008-09-20 08:00-12:00, 2008-09-27 08:00-12:00, 2008-10-04 08:00-12:00, 2008-10-11 08:00-12:00, 2008-10-18 08:00-12:00, 2008-10-25 08:00-12:00, 2008-11-01 08:00-12:00, 2008-11-08 08:00-12:00, 2008-11-15 08:00-12:00, 2008-11-22 08:00-12:00, 2008-11-29 08:00-12:00, 2008-12-06 08:00-12:00, 2008-12-13 08:00-12:00, 2008-12-20 08:00-12:00, 2008-12-27 08:00-12:00, 2009-01-03 08:00-12:00, 2009-01-10 08:00-12:00, 2009-01-17 08:00-12:00, 2009-01-24 08:00-12:00, 2009-01-31 08:00-12:00, 2009-02-07 08:00-12:00, 2009-02-14 08:00-12:00, 2009-02-21 08:00-12:00, 2009-02-28 08:00-12:00, 2009-03-07 08:00-12:00, 2009-03-14 08:00-12:00, 2009-03-21 08:00-12:00, 2009-03-28 08:00-12:00, 2009-04-04 08:00-12:00, 2009-04-11 08:00-12:00, 2009-04-18 08:00-12:00, 2009-04-25 08:00-12:00, 2009-05-02 08:00-12:00, 2009-05-09 08:00-12:00, 2009-05-16 08:00-12:00, 2009-05-23 08:00-12:00, 2009-05-30 08:00-12:00, 2009-06-06 08:00-12:00, 2009-06-13 08:00-12:00, 2009-06-20 08:00-12:00, 2009-06-27 08:00-12:00, 2009-07-04 08:00-12:00, 2009-07-11 08:00-12:00, 2009-07-18 08:00-12:00, 2009-07-25 08:00-12:00, 2009-08-01 08:00-12:00, 2009-08-08 08:00-12:00, 2009-08-15 08:00-12:00, 2009-08-22 08:00-12:00, 2009-08-29 08:00-12:00, 2009-09-05 08:00-12:00, 2009-09-12 08:00-12:00, 2009-09-19 08:00-12:00, 2009-09-26 08:00-12:00, 2009-10-03 08:00-12:00, 2009-10-10 08:00-12:00, 2009-10-17 08:00-12:00, 2009-10-24 08:00-12:00, 2009-10-31 08:00-12:00, 2009-11-07 08:00-12:00, 2009-11-14 08:00-12:00, 2009-11-21 08:00-12:00, 2009-11-28 08:00-12:00, 2009-12-05 08:00-12:00, 2009-12-12 08:00-12:00, 2009-12-19 08:00-12:00.

## Resources

| Resource | Rate |
| --- | --- |
| 管理人员 | 100 |
| 产品工程设计 | 80 |
| 法律 | 80 |
| 市场 | 80 |
| 项目经理 | 80 |
| 加工工程师 | 60 |
| 生产工程师 | 60 |
| 安全 | 60 |
| 会计 | 60 |
| 用户 | 60 |
| 采购 | 60 |
| 预算 |  |
| 差旅费 |  |

## Schedule

| ID | WBS | Task | Type | Duration | Start | Finish | Predecessors | Complete | Remaining | Baseline start | Baseline finish | Baseline duration | Total slack | Constraint | Resources | Work | Actual work | Cost | Baseline cost | Actual cost |
| --- | --- | --- | --- | --- | --- | --- | --- | --- | --- | --- | --- | --- | --- | --- | --- | --- | --- | --- | --- | --- |
| 1 | 1 | **新产品开发模板** |  | 853.5d | 2007-01-01 A | 2009-12-21 |  | 3% | 829.5d | 2007-01-01 | 2009-12-10 | 769d | 0d |  |  | 15728h | 296h | 1,230,720 | 1,094,880 | 23,840 |
| 2 | 1.1 | **新产品的初步筛选阶段** |  | 9.5d | 2007-01-01 A | 2007-01-11 A |  | 100% |  | 2007-01-01 | 2007-01-11 | 9d |  |  |  | 72h | 72h | 5,760 | 5,760 | 5,760 |
| 3 | 1.1.1 | 确定新产品的市场机会 | milestone | 0d | 2007-01-01 A | 2007-01-01 A |  | 100% |  | 2007-01-01 | 2007-01-01 | 0d |  |  | 管理人员; 产品工程设计 |  |  |  |  |  |
| 4 | 1.1.2 | 说明新产品设想(一页书面形式的披露材料) |  | 2d | 2007-01-01 A | 2007-01-02 A | 3 | 100% |  | 2007-01-01 | 2007-01-02 | 2d |  |  | 产品工程设计 | 16h | 16h | 1,280 | 1,280 | 1,280 |
| 5 | 1.1.3 | 为进行可行性决策搜集信息 |  | 6d | 2007-01-03 A | 2007-01-10 A | 4 | 100% |  | 2007-01-03 | 2007-01-10 | 6d |  |  | 产品工程设计 | 48h | 48h | 3,840 | 3,840 | 3,840 |
| 6 | 1.1.4 | 召开筛选委员会会议(决策是否采纳设想) |  | 1d | 2007-01-11 A | 2007-01-11 A | 5 | 100% |  | 2007-01-11 | 2007-01-11 | 1d |  |  | 产品工程设计 | 8h | 8h | 640 | 640 | 640 |
| 7 | 1.1.5 | 决策点: 是否进行初步研究 | milestone | 0d | 2007-01-11 A | 2007-01-11 A | 6 | 100% |  | 2007-01-11 | 2007-01-11 | 0d |  |  | 管理人员; 产品工程设计 |  |  |  |  |  |
| 8 | 1.2 | **初步研究阶段** |  | 69.5d | 2007-01-12 A | 2007-04-10 |  | 20% | 55.35d | 2007-01-12 | 2007-03-30 | 56d | 774.5d |  |  | 1256h | 224h | 95,360 | 78,800 | 18,080 |
| 9 | 1.2.1 | 为初步研究分配资源 |  | 1d | 2007-01-12 A | 2007-01-12 A | 7 | 100% |  | 2007-01-12 | 2007-01-12 | 1d |  |  | 管理人员 | 8h | 8h | 800 | 800 | 800 |
| 10 | 1.2.2 | 制定初步研究计划 |  | 5d | 2007-01-15 A | 2007-01-19 A | 9 | 100% |  | 2007-01-15 | 2007-01-19 | 5d |  |  | 产品工程设计; 项目经理 | 80h | 80h | 6,400 | 6,000 | 6,400 |
| 11 | 1.2.3 | 对市场进行评估 |  | 10d | 2007-01-15 A | 2007-01-26 | 9 | 50% | 5d | 2007-01-15 | 2007-01-26 | 10d | 832d |  | 市场 | 80h | 40h | 6,400 | 4,800 | 3,200 |
| 12 | 1.2.4 | 分析竞争情况 |  | 5d | 2007-01-15 A | 2007-01-19 A | 9 | 100% |  | 2007-01-15 | 2007-01-19 | 5d |  |  | 市场 | 40h | 40h | 3,200 | 2,400 | 3,200 |
| 13 | 1.2.5 | **技术可行性分析** |  | 27d | 2007-01-29 A | 2007-03-02 |  | 28% | 19.44d | 2007-01-25 | 2007-02-21 | 20d | 0d |  |  | 200h | 56h | 15,200 | 11,600 | 4,480 |
| 14 | 1.2.5.1 | 生产实验室规模的产品 |  | 15d | 2007-01-29 A | 2007-02-16 | 12 | 47% | 8d | 2007-01-25 | 2007-02-07 | 10d | 0d | start no earlier than 2007-01-25 | 产品工程设计 | 120h | 56h | 9,600 | 6,400 | 4,480 |
| 15 | 1.2.5.2 | 评估内部产品 |  | 5d | 2007-02-19 | 2007-02-23 | 14 |  |  | 2007-02-08 | 2007-02-14 | 5d | 0d |  | 产品工程设计 | 40h |  | 3,200 | 3,200 |  |
| 16 | 1.2.5.3 | 确定生产所需的加工过程 |  | 5d | 2007-02-26 | 2007-03-02 | 15 |  |  | 2007-02-15 | 2007-02-21 | 5d | 0d |  | 加工工程师 | 40h |  | 2,400 | 2,000 |  |
| 17 | 1.2.6 | 评估生产能力 |  | 10d | 2007-03-05 | 2007-03-16 | 16 |  |  | 2007-02-22 | 2007-03-07 | 10d | 0d |  | 产品工程设计; 生产工程师 | 160h |  | 11,200 | 10,400 |  |
| 18 | 1.2.7 | 确定安全因素 |  | 10d | 2007-03-05 | 2007-03-16 | 17SS |  |  | 2007-02-22 | 2007-03-07 | 10d | 0d |  | 安全 | 80h |  | 4,800 | 2,400 |  |
| 19 | 1.2.8 | 确定环境因素 |  | 10d | 2007-03-05 | 2007-03-16 | 18SS |  |  | 2007-02-22 | 2007-03-07 | 10d | 0d |  | 产品工程设计; 法律 | 160h |  | 12,800 | 11,200 |  |
| 20 | 1.2.9 | 检查法律问题 |  | 10d | 2007-03-05 | 2007-03-16 | 19SS |  |  | 2007-02-22 | 2007-03-07 | 10d | 0d |  | 法律; 项目经理 | 160h |  | 12,800 | 10,400 |  |
| 21 | 1.2.10 | 进行财务评估 |  | 10d | 2007-03-19 | 2007-03-30 | 20, 17, 18, 19 |  |  | 2007-03-08 | 2007-03-21 | 10d | 0d |  | 会计 | 80h |  | 4,800 | 2,400 |  |
| 22 | 1.2.11 | 进行风险分析 |  | 5d | 2007-04-02 | 2007-04-06 | 21 |  |  | 2007-03-22 | 2007-03-28 | 5d | 0d |  | 产品工程设计; 项目经理 | 80h |  | 6,400 | 6,000 |  |
| 23 | 1.2.12 | 起草初步开发阶段计划 |  | 10d | 2007-03-19 | 2007-03-30 | 21SS |  |  | 2007-03-08 | 2007-03-21 | 10d | 5d |  | 产品工程设计 | 80h |  | 6,400 | 6,400 |  |
| 24 | 1.2.13 | 做出初步研究阶段的决策 |  | 2d | 2007-04-09 | 2007-04-10 | 22, 23 |  |  | 2007-03-29 | 2007-03-30 | 2d | 0d |  | 管理人员; 产品工程设计; 项目经理 | 48h |  | 4,160 | 4,000 |  |
| 25 | 1.2.14 | 决策点: 是否进入开发阶段 | milestone | 0d | 2007-04-10 | 2007-04-10 | 24 |  |  | 2007-03-30 | 2007-03-30 | 0d | 704d |  | 管理人员; 项目经理 |  |  |  |  |  |

| ID | WBS | Task | Type | Duration | Start | Finish | Predecessors | Baseline start | Baseline finish | Baseline duration | Total slack | Free slack | Resources | Work | Cost | Baseline cost |
| --- | --- | --- | --- | --- | --- | --- | --- | --- | --- | --- | --- | --- | --- | --- | --- | --- |
| 26 | 1.3 | **开发阶段** |  | 290.5d | 2007-04-11 | 2008-04-14 |  | 2007-04-02 | 2008-04-03 | 264d | 0d |  |  | 5408h | 419,520 | 370,160 |
| 27 | 1.3.1 | 为开发阶段计划分配资源 |  | 1d | 2007-04-11 | 2007-04-11 | 24 | 2007-04-02 | 2007-04-02 | 1d | 0d |  | 管理人员; 项目经理 | 16h | 1,440 | 1,360 |
| 28 | 1.3.2 | **市场评估** |  | 44d | 2007-04-12 | 2007-06-06 |  | 2007-04-03 | 2007-05-28 | 40d | 2d |  |  | 480h | 38,400 | 32,800 |
| 29 | 1.3.2.1 | 搜集市场信息 |  | 15d | 2007-04-12 | 2007-05-02 | 27 | 2007-04-03 | 2007-04-23 | 15d | 2d | 0d | 产品工程设计; 市场 | 240h | 19,200 | 16,800 |
| 30 | 1.3.2.2 | 确定并联系抽样用户群 |  | 5d | 2007-05-03 | 2007-05-09 | 29 | 2007-04-24 | 2007-04-30 | 5d | 12d | 10d | 市场 | 40h | 3,200 | 2,400 |
| 31 | 1.3.2.3 | 进行竞争者分析 |  | 15d | 2007-05-03 | 2007-05-23 | 29 | 2007-04-24 | 2007-05-14 | 15d | 2d | 0d | 市场 | 120h | 9,600 | 7,200 |
| 32 | 1.3.2.4 | 重新定义产品需求 |  | 10d | 2007-05-24 | 2007-06-06 | 30, 31 | 2007-05-15 | 2007-05-28 | 10d | 2d |  | 产品工程设计 | 80h | 6,400 | 6,400 |
| 33 | 1.3.3 | **产品技术评估** |  | 224.5d | 2007-04-12 | 2008-01-22 |  | 2007-04-03 | 2008-01-11 | 204d | 0d |  |  | 3488h | 269,440 | 238,320 |
| 34 | 1.3.3.1 | 确定产品特征(性能标准) |  | 2d | 2007-04-12 | 2007-04-13 | 27 | 2007-04-03 | 2007-04-04 | 2d | 0d |  | 产品工程设计 | 16h | 1,280 | 1,280 |
| 35 | 1.3.3.2 | 研究原型生产过程 |  | 10d | 2007-04-16 | 2007-04-27 | 34 | 2007-04-05 | 2007-04-18 | 10d | 0d |  | 产品工程设计 | 80h | 6,400 | 6,400 |
| 36 | 1.3.3.3 | 生产原型产品 |  | 25d | 2007-04-30 | 2007-06-01 | 35 | 2007-04-19 | 2007-05-23 | 25d | 0d |  | 产品工程设计 | 200h | 16,000 | 16,000 |
| 37 | 1.3.3.4 | 进行内部产品审查 |  | 5d | 2007-06-04 | 2007-06-08 | 36 | 2007-05-24 | 2007-05-30 | 5d | 0d |  | 管理人员; 产品工程设计 | 80h | 7,200 | 7,200 |
| 38 | 1.3.3.5 | 为专利申请过程建立档案 |  | 10d | 2007-04-16 | 2007-04-27 | 34 | 2007-04-05 | 2007-04-18 | 10d | 229d | 194d | 产品工程设计 | 80h | 6,400 | 6,400 |
| 39 | 1.3.3.6 | 进行市场/技术审查 |  | 92d | 2007-06-11 | 2007-10-16 | 37, 32 | 2007-05-31 | 2007-10-05 | 92d | 0d |  | 市场; 产品工程设计 | 1472h | 117,760 | 103,040 |
| 40 | 1.3.3.7 | 重新设计生产过程(如果必要) |  | 10d | 2007-10-17 | 2007-10-30 | 39 | 2007-10-08 | 2007-10-19 | 10d | 0d |  | 产品工程设计; 加工工程师 | 160h | 11,200 | 10,400 |
| 41 | 1.3.3.8 | 修改原型生产过程 |  | 15d | 2007-10-31 | 2007-11-20 | 40 | 2007-10-22 | 2007-11-09 | 15d | 0d |  | 加工工程师 | 120h | 7,200 | 6,000 |
| 42 | 1.3.3.9 | 制定用户产品测试计划 |  | 5d | 2007-11-21 | 2007-11-27 | 41 | 2007-11-12 | 2007-11-16 | 5d | 20d |  | 项目经理 | 40h | 3,200 | 2,800 |
| 43 | 1.3.3.10 | 生产用于用户测试的产品 |  | 25d | 2007-11-21 | 2007-12-25 | 41 | 2007-11-12 | 2007-12-14 | 25d | 0d |  | 产品工程设计; 市场; 项目经理 | 600h | 48,000 | 42,000 |
| 44 | 1.3.3.11 | 审查初步的生产过程 |  | 10d | 2007-12-26 | 2008-01-08 | 43 | 2007-12-17 | 2007-12-28 | 10d | 10d |  | 加工工程师; 生产工程师 | 160h | 9,600 | 8,000 |
| 45 | 1.3.3.12 | 展开用户对原型产品的测试 |  | 20d | 2007-12-26 | 2008-01-22 | 43, 42 | 2007-12-17 | 2008-01-11 | 20d | 0d |  | 产品工程设计; 项目经理; 用户 | 480h | 35,200 | 28,800 |
| 46 | 1.3.4 | **概念评估** |  | 62.5d | 2008-01-23 | 2008-04-10 |  | 2008-01-14 | 2008-04-01 | 57d | 0d |  |  | 1376h | 106,720 | 94,480 |
| 47 | 1.3.4.1 | 进行市场/技术审查 |  | 2d | 2008-01-23 | 2008-01-24 | 45, 44 | 2008-01-14 | 2008-01-15 | 2d | 0d |  | 管理人员; 产品工程设计; 市场 | 48h | 4,160 | 3,840 |
| 48 | 1.3.4.2 | 准备初步的生产设计 |  | 20d | 2008-01-25 | 2008-02-21 | 47 | 2008-01-16 | 2008-02-12 | 20d | 0d |  | 产品工程设计 | 160h | 12,800 | 12,800 |
| 49 | 1.3.4.3 | 评估可供选择的外包生产方案 |  | 10d | 2008-02-22 | 2008-03-06 | 48 | 2008-02-13 | 2008-02-26 | 10d | 467d |  | 法律; 加工工程师 | 160h | 11,200 | 8,800 |
| 50 | 1.3.4.4 | 审查法律和专利方面的问题 |  | 10d | 2008-01-25 | 2008-02-07 | 47, 38 | 2008-01-16 | 2008-01-29 | 10d | 35d |  | 管理人员; 法律 | 160h | 14,400 | 12,800 |
| 51 | 1.3.4.5 | 审查环境问题 |  | 10d | 2008-02-22 | 2008-03-06 | 48 | 2008-02-13 | 2008-02-26 | 10d | 5d |  | 产品工程设计 | 80h | 6,400 | 6,400 |
| 52 | 1.3.4.6 | 审查产品安全性 |  | 15d | 2008-01-25 | 2008-02-14 | 47 | 2008-01-16 | 2008-02-05 | 15d | 20d |  | 产品工程设计; 安全 | 240h | 16,800 | 13,200 |
| 53 | 1.3.4.7 | 评估/预测产品生命周期 |  | 15d | 2008-02-22 | 2008-03-13 | 48 | 2008-02-13 | 2008-03-04 | 15d | 0d |  | 产品工程设计; 项目经理 | 240h | 19,200 | 18,000 |
| 54 | 1.3.4.8 | 更新财政分析 |  | 10d | 2008-03-14 | 2008-03-27 | 53, 52, 51, 57 | 2008-03-05 | 2008-03-18 | 10d | 0d |  | 会计 | 80h | 4,800 | 2,400 |
| 55 | 1.3.4.9 | 风险分析 |  | 10d | 2008-03-28 | 2008-04-10 | 50, 54, 52 | 2008-03-19 | 2008-04-01 | 10d | 0d |  | 产品工程设计 | 80h | 6,400 | 6,400 |
| 56 | 1.3.4.10 | 审查初步的研究标准 |  | 2d | 2008-03-28 | 2008-03-31 | 54 | 2008-03-19 | 2008-03-20 | 2d | 8d |  | 管理人员; 产品工程设计; 法律 | 48h | 4,160 | 3,840 |
| 57 | 1.3.4.11 | 制定试生产阶段计划 |  | 5d | 2008-01-25 | 2008-01-31 | 48SS | 2008-01-16 | 2008-01-22 | 5d | 30d |  | 产品工程设计; 项目经理 | 80h | 6,400 | 6,000 |
| 58 | 1.3.5 | 进行开发阶段审查 |  | 2d | 2008-04-11 | 2008-04-14 | 55, 56, 57 | 2008-04-02 | 2008-04-03 | 2d | 0d |  | 产品工程设计; 项目经理; 加工工程师 | 48h | 3,520 | 3,200 |
| 59 | 1.3.6 | 决策点: 是否进入试生产阶段 | milestone | 0d | 2008-04-14 | 2008-04-14 | 58 | 2008-04-03 | 2008-04-03 | 0d | 0d |  | 管理人员; 项目经理 |  |  |  |

| ID | WBS | Task | Duration | Start | Finish | Predecessors | Baseline start | Baseline finish | Baseline duration | Total slack | Resources | Work | Cost | Baseline cost |
| --- | --- | --- | --- | --- | --- | --- | --- | --- | --- | --- | --- | --- | --- | --- |
| 60 | 1.4 | **试生产阶段** | 126.5d | 2008-04-15 | 2008-09-22 |  | 2008-04-04 | 2008-09-11 | 115d | 0d |  | 1992h | 155,840 | 142,720 |
| 61 | 1.4.1 | 为试生产阶段分配资源 | 1d | 2008-04-15 | 2008-04-15 | 58, 59 | 2008-04-04 | 2008-04-04 | 1d | 0d | 管理人员; 项目经理 | 16h | 1,440 | 1,360 |
| 62 | 1.4.2 | 确保用户能参予商品化试验阶段的工作 | 5d | 2008-04-16 | 2008-04-22 | 61 | 2008-04-07 | 2008-04-11 | 5d | 0d | 法律; 项目经理 | 80h | 6,400 | 5,200 |
| 63 | 1.4.3 | **试生产** | 77d | 2008-04-23 | 2008-07-29 |  | 2008-04-14 | 2008-07-18 | 70d | 0d |  | 1160h | 92,800 | 90,800 |
| 64 | 1.4.3.1 | 排定日程/保留试生产所需的设施 | 5d | 2008-04-23 | 2008-04-29 | 62 | 2008-04-14 | 2008-04-18 | 5d | 0d | 项目经理 | 40h | 3,200 | 2,800 |
| 65 | 1.4.3.2 | 解决原材料和成品的后勤问题 | 5d | 2008-04-30 | 2008-05-06 | 64 | 2008-04-21 | 2008-04-25 | 5d | 0d | 产品工程设计; 项目经理 | 80h | 6,400 | 6,000 |
| 66 | 1.4.3.3 | 复查试生产计划和要求 | 5d | 2008-04-23 | 2008-04-29 | 62 | 2008-04-14 | 2008-04-18 | 5d | 5d | 产品工程设计; 项目经理 | 80h | 6,400 | 6,000 |
| 67 | 1.4.3.4 | 开始试生产 | 30d | 2008-05-07 | 2008-06-17 | 65, 66 | 2008-04-28 | 2008-06-06 | 30d | 0d | 产品工程设计 | 240h | 19,200 | 19,200 |
| 68 | 1.4.3.5 | 监控用户试用情况 | 20d | 2008-05-07 | 2008-06-03 | 67SS | 2008-04-28 | 2008-05-23 | 20d | 0d | 产品工程设计 | 160h | 12,800 | 12,800 |
| 69 | 1.4.3.6 | 审查初步试生产的结果 | 10d | 2008-06-04 | 2008-06-17 | 68 | 2008-05-26 | 2008-06-06 | 10d | 0d | 产品工程设计; 项目经理 | 160h | 12,800 | 12,000 |
| 70 | 1.4.3.7 | 继续试生产 | 30d | 2008-06-18 | 2008-07-29 | 69 | 2008-06-09 | 2008-07-18 | 30d | 0d | 产品工程设计 | 240h | 19,200 | 19,200 |
| 71 | 1.4.3.8 | 完成对用户试用情况的监控 | 20d | 2008-06-18 | 2008-07-15 | 70SS | 2008-06-09 | 2008-07-04 | 20d | 0d | 产品工程设计 | 160h | 12,800 | 12,800 |
| 72 | 1.4.4 | **试验结果分析** | 54d | 2008-07-16 | 2008-09-22 |  | 2008-07-07 | 2008-09-11 | 49d | 0d |  | 736h | 55,200 | 45,360 |
| 73 | 1.4.4.1 | 确认销售和营销策略 | 5d | 2008-07-16 | 2008-07-22 | 71 | 2008-07-07 | 2008-07-11 | 5d | 0d | 市场; 项目经理 | 80h | 6,400 | 5,200 |
| 74 | 1.4.4.2 | 确认产品的安全性 | 5d | 2008-07-16 | 2008-07-22 | 73SS | 2008-07-07 | 2008-07-11 | 5d | 0d | 项目经理; 安全 | 80h | 5,600 | 4,000 |
| 75 | 1.4.4.3 | 重新评估生产过程 | 15d | 2008-07-23 | 2008-08-12 | 73, 74 | 2008-07-14 | 2008-08-01 | 15d | 0d | 加工工程师 | 120h | 7,200 | 6,000 |
| 76 | 1.4.4.4 | 制定商品化计划 | 15d | 2008-08-13 | 2008-09-02 | 75 | 2008-08-04 | 2008-08-22 | 15d | 0d | 产品工程设计; 市场 | 240h | 19,200 | 16,800 |
| 77 | 1.4.4.5 | 复查财务状况 | 5d | 2008-09-03 | 2008-09-09 | 76 | 2008-08-25 | 2008-08-29 | 5d | 5d | 会计 | 40h | 2,400 | 1,200 |
| 78 | 1.4.4.6 | 复查专利和法律问题 | 10d | 2008-09-03 | 2008-09-16 | 76 | 2008-08-25 | 2008-09-05 | 10d | 0d | 法律 | 80h | 6,400 | 4,800 |
| 79 | 1.4.4.7 | 指定商品化过程的领导职责和资源 | 2d | 2008-09-17 | 2008-09-18 | 77, 78 | 2008-09-08 | 2008-09-09 | 2d | 0d | 管理人员; 项目经理 | 32h | 2,880 | 2,720 |
| 80 | 1.4.4.8 | 对试生产阶段进行审查并做出商品化决策 | 2d | 2008-09-19 | 2008-09-22 | 79 | 2008-09-10 | 2008-09-11 | 2d | 0d | 管理人员; 产品工程设计; 市场; 加工工程师 | 64h | 5,120 | 4,640 |
| 81 | 1.5 | **商品化阶段** | 214.5d | 2008-09-23 | 2009-06-22 |  | 2008-09-12 | 2009-06-11 | 195d | 0d |  | 3480h | 252,640 | 226,240 |
| 82 | 1.5.1 | **产品的生产和监控** | 184.5d | 2008-09-23 | 2009-05-14 |  | 2008-09-12 | 2009-05-05 | 168d | 0d |  | 2608h | 187,360 | 168,320 |
| 83 | 1.5.1.1 | 确认产品规范 | 3d | 2008-09-23 | 2008-09-25 | 80 | 2008-09-12 | 2008-09-16 | 3d | 0d | 产品工程设计; 生产工程师 | 48h | 3,360 | 3,120 |
| 84 | 1.5.1.2 | 确认用户对规范的接受程度并参与试验 | 10d | 2008-09-26 | 2008-10-09 | 83 | 2008-09-17 | 2008-09-30 | 10d | 0d | 产品工程设计; 项目经理 | 160h | 12,800 | 12,000 |
| 85 | 1.5.1.3 | 确定生产过程的要求 | 10d | 2008-10-10 | 2008-10-23 | 84 | 2008-10-01 | 2008-10-14 | 10d | 0d | 加工工程师; 生产工程师 | 160h | 9,600 | 8,000 |
| 86 | 1.5.1.4 | 设计和定购新的设备 | 30d | 2008-10-24 | 2008-12-04 | 85 | 2008-10-15 | 2008-11-25 | 30d | 0d | 产品工程设计; 采购 | 480h | 33,600 | 26,400 |
| 87 | 1.5.1.5 | 安装并测试新的设备或改装的设备 | 30d | 2008-12-05 | 2009-01-15 | 86 | 2008-11-26 | 2009-01-06 | 30d | 0d | 产品工程设计; 生产工程师 | 480h | 33,600 | 31,200 |
| 88 | 1.5.1.6 | 确认生产能力 | 10d | 2009-01-16 | 2009-01-29 | 87 | 2009-01-07 | 2009-01-20 | 10d | 0d | 生产工程师 | 80h | 4,800 | 4,000 |
| 89 | 1.5.1.7 | 制定并审查生产试验计划(解决后勤问题) | 5d | 2009-01-30 | 2009-02-05 | 88 | 2009-01-21 | 2009-01-27 | 5d | 0d | 产品工程设计; 项目经理 | 80h | 6,400 | 6,000 |
| 90 | 1.5.1.8 | 开始商业产量的生产 | 40d | 2009-02-06 | 2009-04-02 | 89 | 2009-01-28 | 2009-03-24 | 40d | 0d | 产品工程设计; 生产工程师 | 640h | 44,800 | 41,600 |
| 91 | 1.5.1.9 | 监控用户接受程度试验 | 30d | 2009-04-03 | 2009-05-14 | 90 | 2009-03-25 | 2009-05-05 | 30d | 0d | 产品工程设计; 项目经理 | 480h | 38,400 | 36,000 |

| ID | WBS | Task | Duration | Start | Finish | Predecessors | Baseline start | Baseline finish | Baseline duration | Total slack | Free slack | Resources | Work | Cost | Baseline cost |
| --- | --- | --- | --- | --- | --- | --- | --- | --- | --- | --- | --- | --- | --- | --- | --- |
| 92 | 1.5.2 | **商品化分析** | 63d | 2009-04-03 | 2009-06-22 |  | 2009-03-25 | 2009-06-11 | 57d | 0d |  |  | 872h | 65,280 | 57,920 |
| 93 | 1.5.2.1 | 进行内部产品测试 | 15d | 2009-04-03 | 2009-04-23 | 90 | 2009-03-25 | 2009-04-14 | 15d | 15d |  | 产品工程设计 | 120h | 9,600 | 9,600 |
| 94 | 1.5.2.2 | 审查生产业绩 | 10d | 2009-05-15 | 2009-05-28 | 91, 93 | 2009-05-06 | 2009-05-19 | 10d | 0d |  | 管理人员; 产品工程设计; 项目经理 | 240h | 20,800 | 20,000 |
| 95 | 1.5.2.3 | 确定长期生产需求 | 15d | 2009-05-29 | 2009-06-18 | 94 | 2009-05-20 | 2009-06-09 | 15d | 0d |  | 加工工程师; 生产工程师 | 240h | 14,400 | 12,000 |
| 96 | 1.5.2.4 | 重新计算产品经济效益 | 10d | 2009-05-29 | 2009-06-11 | 94 | 2009-05-20 | 2009-06-02 | 10d | 5d |  | 产品工程设计; 市场; 会计 | 240h | 17,600 | 13,600 |
| 97 | 1.5.2.5 | 确认继续进行商品化的决策 | 2d | 2009-06-19 | 2009-06-22 | 96, 95 | 2009-06-10 | 2009-06-11 | 2d | 0d |  | 管理人员; 项目经理 | 32h | 2,880 | 2,720 |
| 98 | 1.6 | **商品化完成后的回顾** | 143d | 2009-06-23 | 2009-12-21 |  | 2009-06-12 | 2009-12-10 | 130d | 0d |  |  | 3520h | 301,600 | 271,200 |
| 99 | 1.6.1 | 确定产品是否达到用户对成本/性能比的期望 | 60d | 2009-06-23 | 2009-09-14 | 97 | 2009-06-12 | 2009-09-03 | 60d | 0d |  | 管理人员; 项目经理 | 960h | 86,400 | 81,600 |
| 100 | 1.6.2 | 确定销售是否达到了预期值 | 60d | 2009-06-23 | 2009-09-14 | 99SS | 2009-06-12 | 2009-09-03 | 60d | 40d | 0d | 管理人员; 市场 | 960h | 86,400 | 76,800 |
| 101 | 1.6.3 | 确定产品在竞争对手做出反应的情况下是否保持了市场份额 | 30d | 2009-09-15 | 2009-10-26 | 100 | 2009-09-04 | 2009-10-15 | 30d | 40d |  | 管理人员; 市场 | 480h | 43,200 | 38,400 |
| 102 | 1.6.4 | 评估生产过程的稳定性和成本效益 | 40d | 2009-09-15 | 2009-11-09 | 99 | 2009-09-04 | 2009-10-29 | 40d | 0d |  | 项目经理; 生产工程师 | 640h | 44,800 | 38,400 |
| 103 | 1.6.5 | 确定当前的经济状况是否与预期的经济状况相一致 | 15d | 2009-11-10 | 2009-11-30 | 102 | 2009-10-30 | 2009-11-19 | 15d | 0d |  | 市场 | 120h | 9,600 | 7,200 |
| 104 | 1.6.6 | 评估扩大产品和产品线的可能性 | 15d | 2009-12-01 | 2009-12-21 | 103 | 2009-11-20 | 2009-12-10 | 15d | 0d |  | 管理人员; 产品工程设计; 市场 | 360h | 31,200 | 28,800 |
